WBSID,Level,Description,PhaseID,PhaseName,TaskID,BaselineStart,BaselineFinish,DurationDays,BudgetCAD,PlannedPercent,ActualPercent,PercentVariance,Status,Drift,TaskCPI,AccountableName,ResponsibleName,Comment
0,Phase,PROJECT MANAGEMENT (all phases),0,PROJECT MANAGEMENT (all phases),,2026-11-09,2029-02-16,831,1164780.0,0.018051,0.019,0.000949,In progress,On track,0.95,,,
0.1,Task,Governance & reporting,0,PROJECT MANAGEMENT (all phases),0.1,2026-11-09,2029-02-16,831,388260.0,0.018051,0.02,0.001949,In progress,On track,0.95,Project director,"Project director, Logistics lead, Energy lead, CSR lead, Planning lead","Kick-off held, RACI circulated, first progress report sent"
0.1.1,Subtask,"Kick-off, roles & RACI",0,PROJECT MANAGEMENT (all phases),0.1,2026-11-09,2028-02-26,475,194130.0,0.031579,0.04,0.008421,In progress,On track,0.95,,,"Kick-off held, RACI circulated, first progress report sent"
0.1.2,Subtask,Regular reporting to MKR,0,PROJECT MANAGEMENT (all phases),0.1,2027-10-31,2029-02-16,475,194130.0,0.0,0.0,0.0,Not started,Not applicable,0.95,,,"Kick-off held, RACI circulated, first progress report sent"
0.2,Task,Planning & control,0,PROJECT MANAGEMENT (all phases),0.2,2026-11-09,2029-02-16,831,388260.0,0.018051,0.022,0.003949,In progress,On track,0.98,Project director,Planning lead,"WBS, Gantt and KPI dashboard delivered"
0.2.1,Subtask,"WBS, schedule & critical path",0,PROJECT MANAGEMENT (all phases),0.2,2026-11-09,2028-02-26,475,194130.0,0.031579,0.044,0.012421,In progress,On track,0.98,,,"WBS, Gantt and KPI dashboard delivered"
0.2.2,Subtask,KPIs & dashboard,0,PROJECT MANAGEMENT (all phases),0.2,2027-10-31,2029-02-16,475,194130.0,0.0,0.0,0.0,Not started,Not applicable,0.98,,,"WBS, Gantt and KPI dashboard delivered"
0.3,Task,Risk & documents,0,PROJECT MANAGEMENT (all phases),0.3,2026-11-09,2029-02-16,831,388260.0,0.018051,0.015,-0.003051,In progress,On track,0.92,Project director,"Logistics lead, Energy lead, CSR lead, Planning lead","Risk register and FMEA produced, document control running late"
0.3.1,Subtask,Risk analysis & FMEA (AMDEC),0,PROJECT MANAGEMENT (all phases),0.3,2026-11-09,2028-02-26,475,194130.0,0.031579,0.03,-0.001579,In progress,On track,0.92,,,"Risk register and FMEA produced, document control running late"
0.3.2,Subtask,Document control,0,PROJECT MANAGEMENT (all phases),0.3,2027-10-31,2029-02-16,475,194130.0,0.0,0.0,0.0,Not started,Not applicable,0.92,,,"Risk register and FMEA produced, document control running late"
1,Phase,DIAGNOSIS & SCOPING,1,DIAGNOSIS & SCOPING,,2026-11-09,2026-11-20,12,194130.0,1.0,1.0,0.0,Complete,On track,0.932,,,
1.1,Task,Needs & constraints,1,DIAGNOSIS & SCOPING,1.1,2026-11-09,2026-11-13,5,53925.0,1.0,1.0,0.0,Complete,On track,0.94,Project director,"Logistics lead, Energy lead, CSR lead",Needs and key figures quantified
1.1.1,Subtask,Analyse MKR documents,1,DIAGNOSIS & SCOPING,1.1,2026-11-09,2026-11-11,3,26962.5,1.0,1.0,0.0,Complete,On track,0.94,,,Needs and key figures quantified
1.1.2,Subtask,"Quantify key data (flows, capacity, energy, climate)",1,DIAGNOSIS & SCOPING,1.1,2026-11-11,2026-11-13,3,26962.5,1.0,1.0,0.0,Complete,On track,0.94,,,Needs and key figures quantified
1.2,Task,Regulatory & site context,1,DIAGNOSIS & SCOPING,1.2,2026-11-11,2026-11-18,8,86280.0,1.0,1.0,0.0,Complete,On track,0.91,Project director,"CSR lead, Logistics lead, Energy lead","Regulatory screening done, site constraints documented"
1.2.1,Subtask,"Regulatory screening (permits, fire, Ontario)",1,DIAGNOSIS & SCOPING,1.2,2026-11-11,2026-11-15,5,43140.0,1.0,1.0,0.0,Complete,On track,0.91,,,"Regulatory screening done, site constraints documented"
1.2.2,Subtask,Site & climate conditions,1,DIAGNOSIS & SCOPING,1.2,2026-11-14,2026-11-18,5,43140.0,1.0,1.0,0.0,Complete,On track,0.91,,,"Regulatory screening done, site constraints documented"
1.3,Task,Stakeholders & scope,1,DIAGNOSIS & SCOPING,1.3,2026-11-16,2026-11-20,5,53925.0,1.0,1.0,0.0,Complete,On track,0.96,Project director / MKR Steering committee,"CSR lead, Project director",Stakeholder register and scope note approved at G1
1.3.1,Subtask,Stakeholder analysis,1,DIAGNOSIS & SCOPING,1.3,2026-11-16,2026-11-18,3,26962.5,1.0,1.0,0.0,Complete,On track,0.96,,,Stakeholder register and scope note approved at G1
1.3.2,Subtask,Scope validation with MKR,1,DIAGNOSIS & SCOPING,1.3,2026-11-18,2026-11-20,3,26962.5,1.0,1.0,0.0,Complete,On track,0.96,,,Stakeholder register and scope note approved at G1
G1,Gate,Decision point - end of phase 1,1,DIAGNOSIS & SCOPING,,2026-11-20,2026-11-20,1,0.0,1.0,1.0,0.0,Passed,Not applicable,1.0,MKR Steering committee,Project director,
2,Phase,FEASIBILITY & SOLUTIONS,2,FEASIBILITY & SOLUTIONS,,2026-11-16,2026-12-08,23,388260.0,0.347826,0.343878,-0.003949,In progress,On track,0.939,,,
2.1,Task,Logistics concept,2,FEASIBILITY & SOLUTIONS,2.1,2026-11-16,2026-11-30,15,118855.1,0.533333,0.55,0.016667,In progress,On track,1.02,Project director,Logistics lead,Logistics concept ahead of schedule
2.1.1,Subtask,Flows & capacity,2,FEASIBILITY & SOLUTIONS,2.1,2026-11-16,2026-11-24,9,59427.55,0.888889,1.0,0.111111,Complete,Ahead,1.02,,,Logistics concept ahead of schedule
2.1.2,Subtask,Zoning & winter operations,2,FEASIBILITY & SOLUTIONS,2.1,2026-11-22,2026-11-30,9,59427.55,0.222222,0.1,-0.122222,In progress,Delayed,1.02,,,Logistics concept ahead of schedule
2.2,Task,Energy concept,2,FEASIBILITY & SOLUTIONS,2.2,2026-11-16,2026-12-03,18,142626.12,0.444444,0.3,-0.144444,In progress,Delayed,0.88,Project director,Energy lead,Late: grid connection data still awaited from the utility
2.2.1,Subtask,"Sizing of chargers, solar & battery",2,FEASIBILITY & SOLUTIONS,2.2,2026-11-16,2026-11-25,10,71313.06,0.8,0.6,-0.2,In progress,Delayed,0.88,,,Late: grid connection data still awaited from the utility
2.2.2,Subtask,Grid connection & smart charging,2,FEASIBILITY & SOLUTIONS,2.2,2026-11-24,2026-12-03,10,71313.06,0.0,0.0,0.0,Not started,Not applicable,0.88,,,Late: grid connection data still awaited from the utility
2.3,Task,CSR & feasibility verdict,2,FEASIBILITY & SOLUTIONS,2.3,2026-11-19,2026-12-04,16,126778.78,0.3125,0.2,-0.1125,In progress,Delayed,0.93,Project director,"CSR lead, Logistics lead, Energy lead, Planning lead","Late, depends on the logistics and energy concepts"
2.3.1,Subtask,"CSR indicators, local jobs, inclusion, eco conception, security",2,FEASIBILITY & SOLUTIONS,2.3,2026-11-19,2026-11-27,9,63389.39,0.555556,0.4,-0.155556,In progress,Delayed,0.93,,,"Late, depends on the logistics and energy concepts"
2.3.2,Subtask,Scenario comparison & verdict,2,FEASIBILITY & SOLUTIONS,2.3,2026-11-26,2026-12-04,9,63389.39,0.0,0.0,0.0,Not started,Not applicable,0.93,,,"Late, depends on the logistics and energy concepts"
G2,Gate,Decision point - end of phase 2,2,FEASIBILITY & SOLUTIONS,,2026-12-08,2026-12-08,1,0.0,0.0,0.0,0.0,At risk,Not applicable,1.0,MKR Steering committee,,
3,Phase,DETAILED DESIGN & PERMITS,3,DETAILED DESIGN & PERMITS,,2026-12-14,2027-06-30,199,2135430.0,0.0,0.0,0.0,Not started,Not applicable,1.0,,,
3.1,Task,Civil & structural design,3,DETAILED DESIGN & PERMITS,3.1,2026-12-14,2027-04-30,138,611388.67,0.0,0.0,0.0,Not started,Not applicable,1.0,Project director,"Logistics lead, Energy lead",
3.1.1,Subtask,Multi-level structure & solar support,3,DETAILED DESIGN & PERMITS,3.1,2026-12-14,2027-03-02,79,305694.34,0.0,0.0,0.0,Not started,Not applicable,1.0,,,
3.1.2,Subtask,Snow load & winter resilience,3,DETAILED DESIGN & PERMITS,3.1,2027-02-11,2027-04-30,79,305694.34,0.0,0.0,0.0,Not started,Not applicable,1.0,,,
3.2,Task,Systems design,3,DETAILED DESIGN & PERMITS,3.2,2027-01-04,2027-05-28,145,642401.14,0.0,0.0,0.0,Not started,Not applicable,1.0,Project director,"Energy lead, Logistics lead",
3.2.1,Subtask,"Energy, charging & grid",3,DETAILED DESIGN & PERMITS,3.2,2027-01-04,2027-03-27,83,321200.57,0.0,0.0,0.0,Not started,Not applicable,1.0,,,
3.2.2,Subtask,Digital supervision & fire safety,3,DETAILED DESIGN & PERMITS,3.2,2027-03-07,2027-05-28,83,321200.57,0.0,0.0,0.0,Not started,Not applicable,1.0,,,
3.3,Task,Permits & grid connection,3,DETAILED DESIGN & PERMITS,3.3,2026-12-14,2027-06-30,199,881640.19,0.0,0.0,0.0,Not started,Not applicable,1.0,Project director,CSR lead,
3.3.1,Subtask,Authority meetings & permit applications,3,DETAILED DESIGN & PERMITS,3.3,2026-12-14,2027-06-30,199,881640.19,0.0,0.0,0.0,Not started,Not applicable,1.0,,,
G3,Gate,Decision point - end of phase 3,3,DETAILED DESIGN & PERMITS,,2027-06-30,2027-06-30,1,0.0,0.0,0.0,0.0,Upcoming,Not applicable,1.0,MKR Steering committee,Project director,
4,Phase,PROCUREMENT & CONSTRUCTION,4,PROCUREMENT & CONSTRUCTION,,2027-06-01,2028-08-25,452,37272960.0,0.0,0.0,0.0,Not started,Not applicable,1.0,,,
4.1,Task,Procurement,4,PROCUREMENT & CONSTRUCTION,4.1,2027-06-01,2027-09-30,122,5600124.53,0.0,0.0,0.0,Not started,Not applicable,1.0,MKR Steering committee / Project director,"Project director, Energy lead",
4.1.1,Subtask,Tender & contractor selection,4,PROCUREMENT & CONSTRUCTION,4.1,2027-06-01,2027-09-30,122,5600124.53,0.0,0.0,0.0,Not started,Not applicable,1.0,,,
4.2,Task,Construction,4,PROCUREMENT & CONSTRUCTION,4.2,2027-07-01,2028-07-28,394,18085648.08,0.0,0.0,0.0,Not started,Not applicable,1.0,Project director,"Suppliers & contractors, CSR lead, Planning lead",
4.2.1,Subtask,Site preparation,4,PROCUREMENT & CONSTRUCTION,4.2,2027-07-01,2027-12-05,158,6028549.36,0.0,0.0,0.0,Not started,Not applicable,1.0,,,
4.2.2,Subtask,Civil works & structure,4,PROCUREMENT & CONSTRUCTION,4.2,2027-10-27,2028-04-01,158,6028549.36,0.0,0.0,0.0,Not started,Not applicable,1.0,,,
4.2.3,Subtask,Roadways ramps & access points,4,PROCUREMENT & CONSTRUCTION,4.2,2028-02-22,2028-07-28,158,6028549.36,0.0,0.0,0.0,Not started,Not applicable,1.0,,,
4.3,Task,Installation,4,PROCUREMENT & CONSTRUCTION,4.3,2027-11-04,2028-08-25,296,13587187.39,0.0,0.0,0.0,Not started,Not applicable,1.0,Project director,"Energy lead, Suppliers & contractors, Logistics lead",
4.3.1,Subtask,"Solar, battery & chargers",4,PROCUREMENT & CONSTRUCTION,4.3,2027-11-04,2028-04-20,169,6793593.69,0.0,0.0,0.0,Not started,Not applicable,1.0,,,
4.3.3,Subtask,Digital & security systems,4,PROCUREMENT & CONSTRUCTION,4.3,2028-03-10,2028-08-25,169,6793593.69,0.0,0.0,0.0,Not started,Not applicable,1.0,,,
G4,Gate,Decision point - end of phase 4,4,PROCUREMENT & CONSTRUCTION,,2028-08-25,2028-08-25,1,0.0,0.0,0.0,0.0,Upcoming,Not applicable,1.0,MKR Steering committee,Project director,
5,Phase,TESTING & READINESS,5,TESTING & READINESS,,2027-07-01,2028-09-29,457,1164780.0,0.0,0.0,0.0,Not started,Not applicable,1.0,,,
5.1,Task,Testing & commissioning,5,TESTING & READINESS,5.1,2028-04-01,2028-09-22,175,245290.61,0.0,0.0,0.0,Not started,Not applicable,1.0,Project director,"Energy lead, Suppliers & contractors, Logistics lead",
5.1.1,Subtask,Energy systems,5,TESTING & READINESS,5.1,2028-04-01,2028-07-09,100,122645.31,0.0,0.0,0.0,Not started,Not applicable,1.0,,,
5.1.2,Subtask,Safety & digital systems,5,TESTING & READINESS,5.1,2028-06-15,2028-09-22,100,122645.31,0.0,0.0,0.0,Not started,Not applicable,1.0,,,
5.2,Task,Operations readiness,5,TESTING & READINESS,5.2,2027-07-01,2028-09-15,443,620935.67,0.0,0.0,0.0,Not started,Not applicable,1.0,Project director,"Logistics lead, CSR lead",
5.2.1,Subtask,"Operating procedures (flows, winter, maintenance)",5,TESTING & READINESS,5.2,2027-07-01,2028-03-09,253,310467.83,0.0,0.0,0.0,Not started,Not applicable,1.0,,,
5.2.2,Subtask,"Local recruitment, training & maintenance contracts",5,TESTING & READINESS,5.2,2028-01-07,2028-09-15,253,310467.83,0.0,0.0,0.0,Not started,Not applicable,1.0,,,
5.3,Task,Handover & review,5,TESTING & READINESS,5.3,2028-03-01,2028-09-29,213,298553.72,0.0,0.0,0.0,Not started,Not applicable,1.0,Project director / MKR Steering committee,"Planning lead, Suppliers & contractors, Project director",
5.3.1,Subtask,"Handover documents (as-built, asset data)",5,TESTING & READINESS,5.3,2028-03-01,2028-06-30,122,149276.86,0.0,0.0,0.0,Not started,Not applicable,1.0,,,
5.3.2,Subtask,Go / no-go review,5,TESTING & READINESS,5.3,2028-05-31,2028-09-29,122,149276.86,0.0,0.0,0.0,Not started,Not applicable,1.0,,,
G5,Gate,Decision point - end of phase 5,5,TESTING & READINESS,,2028-09-29,2028-09-29,1,0.0,0.0,0.0,0.0,Upcoming,Not applicable,1.0,MKR Steering committee,Project director,
6,Phase,OPENING & RAMP-UP,6,OPENING & RAMP-UP,,2028-09-15,2028-12-15,92,310608.0,0.0,0.0,0.0,Not started,Not applicable,1.0,,,
6.1,Task,Phased opening,6,OPENING & RAMP-UP,6.1,2028-09-15,2028-10-15,31,44785.34,0.0,0.0,0.0,Not started,Not applicable,1.0,Project director,"MKR factory, Logistics lead",
6.1.1,Subtask,Increase capacity step by step,6,OPENING & RAMP-UP,6.1,2028-09-15,2028-10-02,18,22392.67,0.0,0.0,0.0,Not started,Not applicable,1.0,,,
6.1.2,Subtask,Capacity at 100%,6,OPENING & RAMP-UP,6.1,2028-09-28,2028-10-15,18,22392.67,0.0,0.0,0.0,Not started,Not applicable,1.0,,,
6.2,Task,Performance monitoring,6,OPENING & RAMP-UP,6.2,2028-09-15,2028-12-15,92,132911.33,0.0,0.0,0.0,Not started,Not applicable,1.0,Project director,"Logistics lead, Energy lead, Planning lead",
6.2.1,Subtask,"Monitor KPIs (flows, energy, solar share)",6,OPENING & RAMP-UP,6.2,2028-09-15,2028-11-06,53,66455.67,0.0,0.0,0.0,Not started,Not applicable,1.0,,,
6.2.2,Subtask,First winter review,6,OPENING & RAMP-UP,6.2,2028-10-24,2028-12-15,53,66455.67,0.0,0.0,0.0,Not started,Not applicable,1.0,,,
6.3,Task,Adjustments,6,OPENING & RAMP-UP,6.3,2028-09-15,2028-12-15,92,132911.33,0.0,0.0,0.0,Not started,Not applicable,1.0,Project director / MKR Steering committee,"Logistics lead, Energy lead, Suppliers & contractors, Project director",
6.3.1,Subtask,Fix issues & adapt procedures,6,OPENING & RAMP-UP,6.3,2028-09-15,2028-11-06,53,66455.67,0.0,0.0,0.0,Not started,Not applicable,1.0,,,
6.3.2,Subtask,Confirm full operation,6,OPENING & RAMP-UP,6.3,2028-10-24,2028-12-15,53,66455.67,0.0,0.0,0.0,Not started,Not applicable,1.0,,,
G6,Gate,Decision point - end of phase 6,6,OPENING & RAMP-UP,,2028-12-15,2028-12-15,1,0.0,0.0,0.0,0.0,Upcoming,Not applicable,1.0,MKR Steering committee,Project director,
7,Phase,CLOSURE & TRANSITION,7,CLOSURE & TRANSITION,,2028-11-01,2029-02-16,108,77652.0,0.0,0.0,0.0,Not started,Not applicable,1.0,,,
7.1,Task,Project closure,7,CLOSURE & TRANSITION,7.1,2028-11-01,2029-01-31,92,28806.39,0.0,0.0,0.0,Not started,Not applicable,1.0,C.E.S. management / Project director,"Project director, Planning lead",
7.1.1,Subtask,Final report,7,CLOSURE & TRANSITION,7.1,2028-11-01,2028-12-23,53,14403.19,0.0,0.0,0.0,Not started,Not applicable,1.0,,,
7.1.2,Subtask,Lessons learned and replication for other MKR sites,7,CLOSURE & TRANSITION,7.1,2028-12-10,2029-01-31,53,14403.19,0.0,0.0,0.0,Not started,Not applicable,1.0,,,
7.2,Task,Transfer to operations,7,CLOSURE & TRANSITION,7.2,2028-11-15,2029-01-31,78,24422.81,0.0,0.0,0.0,Not started,Not applicable,1.0,Project director,"Logistics lead, Energy lead",
7.2.1,Subtask,Transfer to the operations team,7,CLOSURE & TRANSITION,7.2,2028-11-15,2028-12-29,45,12211.4,0.0,0.0,0.0,Not started,Not applicable,1.0,,,
7.2.2,Subtask,Maintenance & monitoring plan,7,CLOSURE & TRANSITION,7.2,2028-12-18,2029-01-31,45,12211.4,0.0,0.0,0.0,Not started,Not applicable,1.0,,,
7.3,Task,Future use,7,CLOSURE & TRANSITION,7.3,2028-12-01,2029-02-16,78,24422.81,0.0,0.0,0.0,Not started,Not applicable,1.0,Project director,"Logistics lead, CSR lead",
7.3.2,Subtask,End-of-life considerations,7,CLOSURE & TRANSITION,7.3,2028-12-01,2029-02-16,78,24422.81,0.0,0.0,0.0,Not started,Not applicable,1.0,,,
G7,Gate,Decision point - end of phase 7,7,CLOSURE & TRANSITION,,2029-02-16,2029-02-16,1,0.0,0.0,0.0,0.0,Upcoming,Not applicable,1.0,MKR Steering committee,Project director,
